# Projeto_SoluçõesRifa2

Schedule from MS Project, 2009-10-12 to 2009-11-24, costs in R$, A marks actual dates.

## Calendars

- Padrão: Mon-Fri 09:00-12:00, 13:00-18:00; Sat-Sun off.

## Resources

| Resource | Unit | Rate |
| --- | --- | --- |
| Analista 1 |  | 20 |
| Programador 1 |  | 12 |
| Computador | 10 | 1299 |
| Imóvel | 1 | 36000 |
| Switch 16 portas |  | 159 |
| Cabo de rede | 20 | 0.8 |
| Cadeira giratória | 10 | 109 |
| Bancada | 2 | 400 |
| Mesa para escritório | 2 | 199 |
| Gerente de projetos |  | 25 |
| Analista 2 |  | 20 |
| Programador 2 |  | 12 |
| Programador 3 |  | 12 |
| Programador 4 |  | 12 |
| Programador 5 |  | 12 |
| Programador 6 |  |  |
| Programador 7 |  | 12 |

## Schedule

| ID | WBS | Task | Duration | Start | Finish | Predecessors | Complete | Remaining | Baseline start | Baseline finish | Baseline duration | Baseline 1 start | Baseline 1 finish | Total slack | Free slack | Constraint | Resources | Work | Actual work | Cost | Baseline cost | Actual cost |
| --- | --- | --- | --- | --- | --- | --- | --- | --- | --- | --- | --- | --- | --- | --- | --- | --- | --- | --- | --- | --- | --- | --- |
| 1 | 1 | **Soluções para Rifas** | 32d? | 2009-10-12 A | 2009-11-24 |  | 64% | 11.5d? | 2009-10-13 | 2009-11-20 | 28.5d? | 2009-10-13 | 2009-11-20 | 0d |  |  |  | 827h | 489h | 11,860 | 4,662 | 8,092.04 |
| 2 | 1.1 | **Declaração do Escopo projeto** | 2.12d? | 2009-10-12 A | 2009-10-14 A |  | 100% |  | 2009-10-13 | 2009-10-15 | 2.5d? | 2009-10-13 | 2009-10-15 |  |  |  |  | 20h | 20h | 500 | 500 | 500 |
| 3 | 1.1.1 | Reunião com cliente | 0.38d? | 2009-10-13 A | 2009-10-13 A |  | 100% |  | 2009-10-13 | 2009-10-13 | 0.38d? | 2009-10-13 | 2009-10-13 |  |  |  | Gerente de projetos | 3h | 3h | 75 | 75 | 75 |
| 4 | 1.1.2 | Definição do escopo do produto | 2d? | 2009-10-12 A | 2009-10-13 A | 3 | 100% |  | 2009-10-13 | 2009-10-15 | 2d? | 2009-10-13 | 2009-10-15 |  |  |  | Gerente de projetos | 16h | 16h | 400 | 400 | 400 |
| 5 | 1.1.3 | Aprovação | 0.12d? | 2009-10-14 A | 2009-10-14 A | 4 | 100% |  | 2009-10-15 | 2009-10-15 | 0.12d? | 2009-10-15 | 2009-10-15 |  |  |  | Gerente de projetos | 1h | 1h | 25 | 25 | 25 |
| 6 | 1.2 | **Definição do escopo do projeto** | 11.5d? | 2009-10-14 A | 2009-10-29 A | 2 | 100% |  | 2009-10-15 | 2009-10-30 | 11.5d? | 2009-10-15 | 2009-10-30 |  |  |  |  | 92h | 92h | 2,180 | 550 | 2,180 |
| 7 | 1.2.1 | Modelar negócio | 2d? | 2009-10-14 A | 2009-10-16 A |  | 100% |  | 2009-10-15 | 2009-10-19 | 2d? | 2009-10-15 | 2009-10-19 |  |  |  | Analista 1 | 16h | 16h | 320 | 40 | 320 |
| 8 | 1.2.2 | Requisitos do sistema e aprovação | 1d? | 2009-10-16 A | 2009-10-19 A | 7 | 100% |  | 2009-10-19 | 2009-10-20 | 1d? | 2009-10-19 | 2009-10-20 |  |  |  | Analista 1 | 8h | 8h | 160 | 160 | 160 |
| 9 | 1.2.3 | Contratação da equipe | 3d? | 2009-10-19 A | 2009-10-22 A | 8 | 100% |  | 2009-10-20 | 2009-10-23 | 3d? | 2009-10-20 | 2009-10-23 |  |  |  | Gerente de projetos | 24h | 24h | 600 | 150 | 600 |
| 10 | 1.2.4 | Aquisição de recursos | 5d? | 2009-10-22 A | 2009-10-29 A | 9 | 100% |  | 2009-10-23 | 2009-10-30 | 5d? | 2009-10-23 | 2009-10-30 |  |  | finish no earlier than 2009-10-26 | Gerente de projetos | 40h | 40h | 1,000 | 100 | 1,000 |
| 11 | 1.2.5 | Definição de custo e aprovação | 0.5d? | 2009-10-29 A | 2009-10-29 A | 10 | 100% |  | 2009-10-30 | 2009-10-30 | 0.5d? | 2009-10-30 | 2009-10-30 |  |  |  | Gerente de projetos | 4h | 4h | 100 | 100 | 100 |
| 12 | 1.3 | **Módulo de Cadastro** | 18.38d | 2009-10-29 A | 2009-11-24 | 6 | 52% | 8.86d | 2009-11-02 | 2009-11-20 | 14.5d? | 2009-11-02 | 2009-11-20 | 0d |  |  |  | 272h | 146h | 3,776 | 1,100 | 1,976 |
| 13 | 1.3.1 | Revisar requisitos | 1d | 2009-10-29 A | 2009-10-30 |  | 50% | 0.5d | 2009-11-02 | 2009-11-02 | 0.5d? | 2009-11-02 | 2009-11-02 | 9.75d | 0d | start no earlier than 2009-10-21 | Analista 1 | 8h | 4h | 160 | 140 | 80 |
| 14 | 1.3.2 | Aprovação | 1d | 2009-10-30 A | 2009-11-02 | 13 | 50% | 0.5d | 2009-11-02 | 2009-11-02 | 0.5d? | 2009-11-02 | 2009-11-02 | 9.75d | 0d | start no earlier than 2009-10-21 | Analista 1 | 8h | 4h | 160 |  | 80 |
| 15 | 1.3.3 | Análise e projeto | 3d | 2009-11-02 A | 2009-11-04 | 14 | 67% | 1d | 2009-11-03 | 2009-11-04 | 2d? | 2009-11-03 | 2009-11-04 | 7.88d | 0d |  | Analista 1 | 24h | 16h | 480 |  | 320 |
| 16 | 1.3.4 | Implementação | 9d | 2009-11-04 A | 2009-11-16 | 15 | 49% | 4.62d | 2009-11-05 | 2009-11-12 | 6d? | 2009-11-05 | 2009-11-12 | 4.5d | 0d |  | Programador 1; Programador 2 | 144h | 70h | 1,728 | 576 | 840 |
| 17 | 1.3.5 | Teste | 3d | 2009-11-17 A | 2009-11-19 | 16 | 67% | 1d | 2009-11-13 | 2009-11-16 | 2d? | 2009-11-13 | 2009-11-16 | 2.5d | 0d |  | Programador 1; Programador 2 | 48h | 32h | 576 | 384 | 384 |
| 18 | 1.3.6 | Avaliação do cliente | 1d | 2009-11-20 A | 2009-11-20 | 17 | 50% | 0.5d | 2009-11-17 | 2009-11-17 | 0.5d? | 2009-11-17 | 2009-11-17 | 2d |  |  | Analista 1 | 8h | 4h | 160 |  | 80 |
| 19 | 1.3.7 | Correções | 1d | 2009-11-20 A | 2009-11-20 A | 18 | 100% |  | 2009-11-17 | 2009-11-19 | 2d? | 2009-11-17 | 2009-11-19 |  |  |  | Programador 1; Programador 2 | 16h | 16h | 192 |  | 192 |
| 20 | 1.3.8 | Entrega | 2d | 2009-11-23 | 2009-11-24 | 19 |  |  | 2009-11-19 | 2009-11-20 | 1d? | 2009-11-19 | 2009-11-20 | 0d |  |  | Analista 1 | 16h |  | 320 |  |  |
| 21 | 1.4 | **Módulo de relatório** | 13d | 2009-10-29 A | 2009-11-17 | 6 | 77% | 2.94d | 2009-11-02 | 2009-11-18 | 13d | 2009-11-02 | 2009-11-18 | 5.38d |  |  |  | 187h | 143h | 2,588 | 576 | 1,996.04 |
| 22 | 1.4.1 | Revisar requisitos | 0.5d | 2009-10-29 A | 2009-10-30 A |  | 100% |  | 2009-11-02 | 2009-11-02 | 0.5d | 2009-11-02 | 2009-11-02 |  |  |  | Analista 2 | 4h | 4h | 80 |  | 80 |
| 23 | 1.4.2 | Aprovação | 0.5d | 2009-10-30 A | 2009-10-30 A | 22 | 100% |  | 2009-11-02 | 2009-11-02 | 0.5d | 2009-11-02 | 2009-11-02 |  |  |  | Analista 2 | 4h | 4h | 80 |  | 80 |
| 24 | 1.4.3 | Análise e projeto | 3.38d | 2009-10-30 A | 2009-11-04 A | 23 | 100% |  | 2009-11-03 | 2009-11-04 | 2d | 2009-11-03 | 2009-11-04 |  |  | finish no earlier than 2009-11-04 | Analista 2 | 27h | 27h | 540 |  | 540 |
| 25 | 1.4.4 | Implementação | 5d | 2009-11-05 A | 2009-11-11 A | 24 | 100% |  | 2009-11-05 | 2009-11-11 | 5d | 2009-11-05 | 2009-11-11 |  |  |  | Programador 3; Programador 4 | 80h | 80h | 960 | 576 | 960 |
| 26 | 1.4.5 | Teste | 2d | 2009-11-10 A | 2009-11-12 | 25 | 88% | 0.25d | 2009-11-12 | 2009-11-13 | 2d | 2009-11-12 | 2009-11-13 | 5.38d | 0d |  | Programador 3; Programador 4 | 32h | 28h | 384 |  | 336.04 |
| 27 | 1.4.6 | Avaliação do cliente | 0.5d | 2009-11-12 | 2009-11-13 | 26 |  |  | 2009-11-16 | 2009-11-16 | 0.5d | 2009-11-16 | 2009-11-16 | 5.38d | 0d |  | Analista 2 | 4h |  | 80 |  |  |
| 28 | 1.4.7 | Correções | 2d | 2009-11-13 | 2009-11-17 | 27 |  |  | 2009-11-16 | 2009-11-18 | 2d | 2009-11-16 | 2009-11-18 | 5.38d | 0d |  | Programador 4; Programador 3 | 32h |  | 384 |  |  |
| 29 | 1.4.8 | Entrega | 0.5d | 2009-11-17 | 2009-11-17 | 28 |  |  | 2009-11-18 | 2009-11-18 | 0.5d | 2009-11-18 | 2009-11-18 | 5.38d |  |  | Analista 2 | 4h |  | 80 |  |  |

| ID | WBS | Task | Duration | Start | Finish | Predecessors | Complete | Remaining | Baseline start | Baseline finish | Baseline duration | Baseline 1 start | Baseline 1 finish | Total slack | Free slack | Resources | Work | Actual work | Cost | Baseline cost | Actual cost |
| --- | --- | --- | --- | --- | --- | --- | --- | --- | --- | --- | --- | --- | --- | --- | --- | --- | --- | --- | --- | --- | --- |
| 30 | 1.5 | **Módulo de impressão** | 12d? | 2009-10-29 A | 2009-11-16 | 6 | 67% | 4d? | 2009-11-02 | 2009-11-19 | 14d? | 2009-11-02 | 2009-11-19 | 6.38d |  |  | 96h | 64h | 1,408 | 528 | 960 |
| 31 | 1.5.1 | Revisar requisitos | 0.5d? | 2009-10-29 A | 2009-10-30 A |  | 100% |  | 2009-11-02 | 2009-11-02 | 0.5d? | 2009-11-02 | 2009-11-02 |  |  | Analista 1 | 4h | 4h | 80 | 80 | 80 |
| 32 | 1.5.2 | Aprovação | 0.5d? | 2009-10-30 A | 2009-10-30 A | 31 | 100% |  | 2009-11-02 | 2009-11-02 | 0.5d? | 2009-11-02 | 2009-11-02 |  |  | Analista 1 | 4h | 4h | 80 |  | 80 |
| 33 | 1.5.3 | Análise e projeto | 2d? | 2009-10-30 A | 2009-11-03 A | 32 | 100% |  | 2009-11-03 | 2009-11-04 | 2d? | 2009-11-03 | 2009-11-04 |  |  | Analista 1 | 16h | 16h | 320 |  | 320 |
| 34 | 1.5.4 | Implementação | 5d? | 2009-11-03 A | 2009-11-10 A | 33 | 100% |  | 2009-11-05 | 2009-11-11 | 5d? | 2009-11-05 | 2009-11-11 |  |  | Programador 5 | 40h | 40h | 480 | 96 | 480 |
| 35 | 1.5.5 | Teste | 1d? | 2009-11-10 | 2009-11-11 | 34 |  |  | 2009-11-12 | 2009-11-12 | 1d? | 2009-11-12 | 2009-11-12 | 6.38d | 0d | Programador 5 | 8h |  | 96 |  |  |
| 36 | 1.5.6 | Avaliação do cliente | 0.5d? | 2009-11-11 | 2009-11-12 | 35, 17 |  |  | 2009-11-17 | 2009-11-17 | 0.5d? | 2009-11-17 | 2009-11-17 | 6.38d | 0d | Analista 1 | 4h |  | 80 | 80 |  |
| 37 | 1.5.7 | Correções | 2d? | 2009-11-12 | 2009-11-16 | 36 |  |  | 2009-11-17 | 2009-11-19 | 2d? | 2009-11-17 | 2009-11-19 | 6.38d | 0d | Programador 5 | 16h |  | 192 | 192 |  |
| 38 | 1.5.8 | Entrega | 0.5d | 2009-11-16 | 2009-11-16 | 37 |  |  | 2009-11-19 | 2009-11-19 | 0.5d | 2009-11-19 | 2009-11-19 | 6.38d |  | Analista 1 | 4h |  | 80 | 80 |  |
| 39 | 1.6 | **Módulo de Finanças** | 12d | 2009-10-29 A | 2009-11-16 | 6 | 25% | 9d | 2009-11-02 | 2009-11-18 | 13d | 2009-11-02 | 2009-11-18 | 6.38d |  |  | 160h | 24h | 1,408 | 1,408 | 480 |
| 40 | 1.6.1 | Revisar requisitos | 0.5d | 2009-10-29 A | 2009-10-30 A |  | 100% |  | 2009-11-02 | 2009-11-02 | 0.5d | 2009-11-02 | 2009-11-02 |  |  | Analista 2 | 4h | 4h | 80 | 80 | 80 |
| 41 | 1.6.2 | Aprovação | 0.5d | 2009-10-30 A | 2009-10-30 A | 40 | 100% |  | 2009-11-02 | 2009-11-02 | 0.5d | 2009-11-02 | 2009-11-02 |  |  | Analista 2 | 4h | 4h | 80 | 80 | 80 |
| 42 | 1.6.3 | Análise e projeto | 2d | 2009-10-30 A | 2009-11-03 A | 41 | 100% |  | 2009-11-03 | 2009-11-04 | 2d | 2009-11-03 | 2009-11-04 |  |  | Analista 2 | 16h | 16h | 320 | 320 | 320 |
| 43 | 1.6.4 | Implementação | 5d | 2009-11-03 | 2009-11-10 | 42 |  |  | 2009-11-05 | 2009-11-11 | 5d | 2009-11-05 | 2009-11-11 | 6.38d | 0d | Programador 6; Programador 7 | 80h |  | 480 | 480 |  |
| 44 | 1.6.5 | Teste | 1d | 2009-11-10 | 2009-11-11 | 43 |  |  | 2009-11-12 | 2009-11-12 | 1d | 2009-11-12 | 2009-11-12 | 6.38d | 0d | Programador 6; Programador 7 | 16h |  | 96 | 96 |  |
| 45 | 1.6.6 | Avaliação do cliente | 0.5d | 2009-11-11 | 2009-11-12 | 44, 26 |  |  | 2009-11-16 | 2009-11-16 | 0.5d | 2009-11-16 | 2009-11-16 | 6.38d | 0d | Analista 2 | 4h |  | 80 | 80 |  |
| 46 | 1.6.7 | Correções | 2d | 2009-11-12 | 2009-11-16 | 45 |  |  | 2009-11-16 | 2009-11-18 | 2d | 2009-11-16 | 2009-11-18 | 6.38d | 0d | Programador 6; Programador 7 | 32h |  | 192 | 192 |  |
| 47 | 1.6.8 | Entrega | 0.5d | 2009-11-16 | 2009-11-16 | 46 |  |  | 2009-11-18 | 2009-11-18 | 0.5d | 2009-11-18 | 2009-11-18 | 6.38d |  | Analista 2 | 4h |  | 80 | 80 |  |
