# Projeto_SoluçõesRifa2

Schedule from MS Project, 2009-10-12 to 2009-12-10, costs in R$, A marks actual dates.

## Calendars

- Padrão: Mon-Fri 09:00-12:00, 13:00-18:00; Sat-Sun off.

## Resources

| Resource | Unit | Rate |
| --- | --- | --- |
| Analista 1 |  | 20 |
| Programador 1 |  | 12 |
| Computador | 10 | 1299 |
| Imóvel | 1 | 36000 |
| Switch 16 portas |  | 159 |
| Cabo de rede | 20 | 0.8 |
| Cadeira giratória | 10 | 109 |
| Bancada | 2 | 400 |
| Mesa para escritório | 2 | 199 |
| Gerente de projetos |  | 25 |
| Analista 2 |  | 20 |
| Programador 2 |  | 12 |
| Programador 3 |  | 12 |
| Programador 4 |  | 12 |
| Programador 5 |  | 12 |
| Programador 6 |  |  |
| Programador 7 |  | 12 |

## Schedule

| ID | WBS | Task | Duration | Start | Finish | Predecessors | Complete | Remaining | Baseline start | Baseline finish | Baseline duration | Baseline 1 start | Baseline 1 finish | Total slack | Free slack | Constraint | Resources | Work | Actual work | Cost | Baseline cost | Actual cost |
| --- | --- | --- | --- | --- | --- | --- | --- | --- | --- | --- | --- | --- | --- | --- | --- | --- | --- | --- | --- | --- | --- | --- |
| 1 | 1 | **Soluções para Rifas** | 43.5d? | 2009-10-12 A | 2009-12-10 |  | 41% | 25.79d? | 2009-10-13 | 2009-11-20 | 28.5d? | 2009-10-13 | 2009-11-20 | 0d |  |  |  | 1360h | 473h | 17,784 | 4,662 | 7,900.04 |
| 2 | 1.1 | **Declaração do Escopo projeto** | 2.12d? | 2009-10-12 A | 2009-10-14 A |  | 100% |  | 2009-10-13 | 2009-10-15 | 2.5d? | 2009-10-13 | 2009-10-15 |  |  |  |  | 20h | 20h | 500 | 500 | 500 |
| 3 | 1.1.1 | Reunião com cliente | 0.38d? | 2009-10-13 A | 2009-10-13 A |  | 100% |  | 2009-10-13 | 2009-10-13 | 0.38d? | 2009-10-13 | 2009-10-13 |  |  |  | Gerente de projetos | 3h | 3h | 75 | 75 | 75 |
| 4 | 1.1.2 | Definição do escopo do produto | 2d? | 2009-10-12 A | 2009-10-13 A | 3 | 100% |  | 2009-10-13 | 2009-10-15 | 2d? | 2009-10-13 | 2009-10-15 |  |  |  | Gerente de projetos | 16h | 16h | 400 | 400 | 400 |
| 5 | 1.1.3 | Aprovação | 0.12d? | 2009-10-14 A | 2009-10-14 A | 4 | 100% |  | 2009-10-15 | 2009-10-15 | 0.12d? | 2009-10-15 | 2009-10-15 |  |  |  | Gerente de projetos | 1h | 1h | 25 | 25 | 25 |
| 6 | 1.2 | **Definição do escopo do projeto** | 11.5d? | 2009-10-14 A | 2009-10-29 A | 2 | 100% |  | 2009-10-15 | 2009-10-30 | 11.5d? | 2009-10-15 | 2009-10-30 |  |  |  |  | 92h | 92h | 2,180 | 550 | 2,180 |
| 7 | 1.2.1 | Modelar negócio | 2d? | 2009-10-14 A | 2009-10-16 A |  | 100% |  | 2009-10-15 | 2009-10-19 | 2d? | 2009-10-15 | 2009-10-19 |  |  |  | Analista 1 | 16h | 16h | 320 | 40 | 320 |
| 8 | 1.2.2 | Requisitos do sistema e aprovação | 1d? | 2009-10-16 A | 2009-10-19 A | 7 | 100% |  | 2009-10-19 | 2009-10-20 | 1d? | 2009-10-19 | 2009-10-20 |  |  |  | Analista 1 | 8h | 8h | 160 | 160 | 160 |
| 9 | 1.2.3 | Contratação da equipe | 3d? | 2009-10-19 A | 2009-10-22 A | 8 | 100% |  | 2009-10-20 | 2009-10-23 | 3d? | 2009-10-20 | 2009-10-23 |  |  |  | Gerente de projetos | 24h | 24h | 600 | 150 | 600 |
| 10 | 1.2.4 | Aquisição de recursos | 5d? | 2009-10-22 A | 2009-10-29 A | 9 | 100% |  | 2009-10-23 | 2009-10-30 | 5d? | 2009-10-23 | 2009-10-30 |  |  | finish no earlier than 2009-10-26 | Gerente de projetos | 40h | 40h | 1,000 | 100 | 1,000 |
| 11 | 1.2.5 | Definição de custo e aprovação | 0.5d? | 2009-10-29 A | 2009-10-29 A | 10 | 100% |  | 2009-10-30 | 2009-10-30 | 0.5d? | 2009-10-30 | 2009-10-30 |  |  |  | Gerente de projetos | 4h | 4h | 100 | 100 | 100 |
| 12 | 1.3 | **Módulo de Cadastro** | 29.88d | 2009-10-29 A | 2009-12-10 | 6 | 33% | 20.04d | 2009-11-02 | 2009-11-20 | 14.5d? | 2009-11-02 | 2009-11-20 | 0d |  |  |  | 400h | 130h | 5,440 | 1,100 | 1,784 |
| 13 | 1.3.1 | Revisar requisitos | 1.5d | 2009-10-29 A | 2009-11-02 |  | 33% | 1d | 2009-11-02 | 2009-11-02 | 0.5d? | 2009-11-02 | 2009-11-02 | 9.25d | 0.38d | start no earlier than 2009-10-21 | Analista 1 | 12h | 4h | 240 | 140 | 80 |
| 14 | 1.3.2 | Aprovação | 1d | 2009-11-02 A | 2009-11-03 | 13 | 50% | 0.5d | 2009-11-02 | 2009-11-02 | 0.5d? | 2009-11-02 | 2009-11-02 | 8.38d | 0d | start no earlier than 2009-10-21 | Analista 1 | 8h | 4h | 160 |  | 80 |
| 15 | 1.3.3 | Análise e projeto | 3.5d | 2009-11-03 A | 2009-11-06 | 14 | 57% | 1.5d | 2009-11-03 | 2009-11-04 | 2d? | 2009-11-03 | 2009-11-04 | 6.38d | 0d |  | Analista 1 | 28h | 16h | 560 |  | 320 |
| 16 | 1.3.4 | Implementação | 15d | 2009-11-07 A | 2009-11-27 | 15 | 29% | 10.62d | 2009-11-05 | 2009-11-12 | 6d? | 2009-11-05 | 2009-11-12 | 2d | 0d |  | Programador 1; Programador 2 | 240h | 70h | 2,880 | 576 | 840 |
| 17 | 1.3.5 | Teste | 3d | 2009-11-27 A | 2009-12-02 | 16 | 67% | 1d | 2009-11-13 | 2009-11-16 | 2d? | 2009-11-13 | 2009-11-16 | 0.5d |  |  | Programador 1; Programador 2 | 48h | 32h | 576 | 384 | 384 |
| 18 | 1.3.6 | Avaliação do cliente | 1d | 2009-12-02 A | 2009-12-03 | 17 | 50% | 0.5d | 2009-11-17 | 2009-11-17 | 0.5d? | 2009-11-17 | 2009-11-17 | 0d |  |  | Analista 1 | 8h | 4h | 160 |  | 80 |
| 19 | 1.3.7 | Correções | 2d | 2009-12-03 | 2009-12-07 | 18 |  |  | 2009-11-17 | 2009-11-19 | 2d? | 2009-11-17 | 2009-11-19 | 0d |  |  | Programador 1; Programador 2 | 32h |  | 384 |  |  |
| 20 | 1.3.8 | Entrega | 3d | 2009-12-07 | 2009-12-10 | 19 |  |  | 2009-11-19 | 2009-11-20 | 1d? | 2009-11-19 | 2009-11-20 | 0d |  |  | Analista 1 | 24h |  | 480 |  |  |
| 21 | 1.4 | **Módulo de relatório** | 26.38d | 2009-10-29 A | 2009-12-04 | 6 | 40% | 15.89d | 2009-11-02 | 2009-11-18 | 13d | 2009-11-02 | 2009-11-18 | 3.5d |  |  |  | 392h | 143h | 5,152 | 576 | 1,996.04 |
| 22 | 1.4.1 | Revisar requisitos | 1.5d | 2009-10-29 A | 2009-11-02 |  | 33% | 1d | 2009-11-02 | 2009-11-02 | 0.5d | 2009-11-02 | 2009-11-02 | 28.38d |  |  | Analista 2 | 12h | 4h | 240 |  | 80 |
| 23 | 1.4.2 | Aprovação | 0.5d | 2009-10-30 A | 2009-10-30 A | 22 | 100% |  | 2009-11-02 | 2009-11-02 | 0.5d | 2009-11-02 | 2009-11-02 |  |  |  | Analista 2 | 4h | 4h | 80 |  | 80 |
| 24 | 1.4.3 | Análise e projeto | 4d | 2009-10-30 A | 2009-11-05 | 23 | 84% | 0.62d | 2009-11-03 | 2009-11-04 | 2d | 2009-11-03 | 2009-11-04 | 9.63d | 0d | finish no earlier than 2009-11-04 | Analista 2 | 32h | 27h | 640 |  | 540 |
| 25 | 1.4.4 | Implementação | 15d | 2009-11-05 A | 2009-11-25 | 24 | 33% | 10d | 2009-11-05 | 2009-11-11 | 5d | 2009-11-05 | 2009-11-11 | 5.25d | 0d |  | Programador 3; Programador 4 | 240h | 80h | 2,880 | 576 | 960 |
| 26 | 1.4.5 | Teste | 4d | 2009-11-26 A | 2009-12-01 | 25 | 44% | 2.25d | 2009-11-12 | 2009-11-13 | 2d | 2009-11-12 | 2009-11-13 | 3.5d | 0d |  | Programador 3; Programador 4 | 64h | 28h | 768 |  | 336.04 |
| 27 | 1.4.6 | Avaliação do cliente | 0.5d | 2009-12-02 | 2009-12-02 | 26 |  |  | 2009-11-16 | 2009-11-16 | 0.5d | 2009-11-16 | 2009-11-16 | 3.5d | 0d |  | Analista 2 | 4h |  | 80 |  |  |
| 28 | 1.4.7 | Correções | 2d | 2009-12-02 | 2009-12-04 | 27 |  |  | 2009-11-16 | 2009-11-18 | 2d | 2009-11-16 | 2009-11-18 | 3.5d | 0d |  | Programador 4; Programador 3 | 32h |  | 384 |  |  |
| 29 | 1.4.8 | Entrega | 0.5d | 2009-12-04 | 2009-12-04 | 28 |  |  | 2009-11-18 | 2009-11-18 | 0.5d | 2009-11-18 | 2009-11-18 | 3.5d |  |  | Analista 2 | 4h |  | 80 |  |  |

| ID | WBS | Task | Duration | Start | Finish | Predecessors | Complete | Remaining | Baseline start | Baseline finish | Baseline duration | Baseline 1 start | Baseline 1 finish | Total slack | Free slack | Resources | Work | Actual work | Cost | Baseline cost | Actual cost |
| --- | --- | --- | --- | --- | --- | --- | --- | --- | --- | --- | --- | --- | --- | --- | --- | --- | --- | --- | --- | --- | --- |
| 30 | 1.5 | **Módulo de impressão** | 20d? | 2009-10-29 A | 2009-11-26 | 6 | 39% | 12.2d? | 2009-11-02 | 2009-11-19 | 14d? | 2009-11-02 | 2009-11-19 | 9.88d |  |  | 164h | 64h | 2,256 | 528 | 960 |
| 31 | 1.5.1 | Revisar requisitos | 1d | 2009-10-29 A | 2009-10-30 |  | 50% | 0.5d | 2009-11-02 | 2009-11-02 | 0.5d? | 2009-11-02 | 2009-11-02 | 28.88d |  | Analista 1 | 8h | 4h | 160 | 80 | 80 |
| 32 | 1.5.2 | Aprovação | 0.5d? | 2009-10-30 A | 2009-10-30 A | 31 | 100% |  | 2009-11-02 | 2009-11-02 | 0.5d? | 2009-11-02 | 2009-11-02 |  |  | Analista 1 | 4h | 4h | 80 |  | 80 |
| 33 | 1.5.3 | Análise e projeto | 2d? | 2009-10-30 A | 2009-11-03 A | 32 | 100% |  | 2009-11-03 | 2009-11-04 | 2d? | 2009-11-03 | 2009-11-04 |  |  | Analista 1 | 16h | 16h | 320 |  | 320 |
| 34 | 1.5.4 | Implementação | 12d | 2009-11-03 A | 2009-11-19 | 33 | 42% | 7d | 2009-11-05 | 2009-11-11 | 5d? | 2009-11-05 | 2009-11-11 | 9.88d | 0d | Programador 5 | 96h | 40h | 1,152 | 96 | 480 |
| 35 | 1.5.5 | Teste | 2d | 2009-11-19 | 2009-11-23 | 34 |  |  | 2009-11-12 | 2009-11-12 | 1d? | 2009-11-12 | 2009-11-12 | 9.88d | 0d | Programador 5 | 16h |  | 192 |  |  |
| 36 | 1.5.6 | Avaliação do cliente | 0.5d? | 2009-11-23 | 2009-11-24 | 35, 17 |  |  | 2009-11-17 | 2009-11-17 | 0.5d? | 2009-11-17 | 2009-11-17 | 9.88d | 0d | Analista 1 | 4h |  | 80 | 80 |  |
| 37 | 1.5.7 | Correções | 2d? | 2009-11-24 | 2009-11-26 | 36 |  |  | 2009-11-17 | 2009-11-19 | 2d? | 2009-11-17 | 2009-11-19 | 9.88d | 0d | Programador 5 | 16h |  | 192 | 192 |  |
| 38 | 1.5.8 | Entrega | 0.5d | 2009-11-26 | 2009-11-26 | 37 |  |  | 2009-11-19 | 2009-11-19 | 0.5d | 2009-11-19 | 2009-11-19 | 9.88d |  | Analista 1 | 4h |  | 80 | 80 |  |
| 39 | 1.6 | **Módulo de Finanças** | 20d | 2009-10-29 A | 2009-11-26 | 6 | 15% | 17.07d | 2009-11-02 | 2009-11-18 | 13d | 2009-11-02 | 2009-11-18 | 9.88d |  |  | 292h | 24h | 2,256 | 1,408 | 480 |
| 40 | 1.6.1 | Revisar requisitos | 1d | 2009-10-29 A | 2009-10-30 |  | 50% | 0.5d | 2009-11-02 | 2009-11-02 | 0.5d | 2009-11-02 | 2009-11-02 | 28.88d |  | Analista 2 | 8h | 4h | 160 | 80 | 80 |
| 41 | 1.6.2 | Aprovação | 0.5d | 2009-10-30 A | 2009-10-30 A | 40 | 100% |  | 2009-11-02 | 2009-11-02 | 0.5d | 2009-11-02 | 2009-11-02 |  |  | Analista 2 | 4h | 4h | 80 | 80 | 80 |
| 42 | 1.6.3 | Análise e projeto | 2d | 2009-10-30 A | 2009-11-03 A | 41 | 100% |  | 2009-11-03 | 2009-11-04 | 2d | 2009-11-03 | 2009-11-04 |  |  | Analista 2 | 16h | 16h | 320 | 320 | 320 |
| 43 | 1.6.4 | Implementação | 12d | 2009-11-03 | 2009-11-19 | 42 |  |  | 2009-11-05 | 2009-11-11 | 5d | 2009-11-05 | 2009-11-11 | 9.88d | 0d | Programador 6; Programador 7 | 192h |  | 1,152 | 480 |  |
| 44 | 1.6.5 | Teste | 2d | 2009-11-19 | 2009-11-23 | 43 |  |  | 2009-11-12 | 2009-11-12 | 1d | 2009-11-12 | 2009-11-12 | 9.88d | 0d | Programador 6; Programador 7 | 32h |  | 192 | 96 |  |
| 45 | 1.6.6 | Avaliação do cliente | 0.5d | 2009-11-23 | 2009-11-24 | 44, 26 |  |  | 2009-11-16 | 2009-11-16 | 0.5d | 2009-11-16 | 2009-11-16 | 9.88d | 0d | Analista 2 | 4h |  | 80 | 80 |  |
| 46 | 1.6.7 | Correções | 2d | 2009-11-24 | 2009-11-26 | 45 |  |  | 2009-11-16 | 2009-11-18 | 2d | 2009-11-16 | 2009-11-18 | 9.88d | 0d | Programador 6; Programador 7 | 32h |  | 192 | 192 |  |
| 47 | 1.6.8 | Entrega | 0.5d | 2009-11-26 | 2009-11-26 | 46 |  |  | 2009-11-18 | 2009-11-18 | 0.5d | 2009-11-18 | 2009-11-18 | 9.88d |  | Analista 2 | 4h |  | 80 | 80 |  |
